# GANTT

Schedule from MS Project, 2024-04-17 to 2024-11-07, costs in €.

## Calendars

- Standard: Mon-Fri 08:00-12:00, 13:00-17:00; Sat-Sun off.

## Resources

| Resource | Unit | Rate | Cost per use |
| --- | --- | --- | --- |
| Backend Developer |  | 45 |  |
| Frontend Developer |  | 40 |  |
| Data Base Analyst |  | 35 |  |
| Business Analyst |  | 60 |  |
| Data Security Expert |  | 30 | 200 |
| Software Architect |  | 50 |  |
| Staff Instructor |  | 40 | 100 |
| Packet Leader |  | 80 |  |
| Office |  |  |  |
| Laptop | Unit | 1000 |  |
| Tester |  | 50 |  |

## Schedule

| ID | WBS | Task | Type | Duration | Start | Finish | Predecessors | Total slack | Free slack | Resources | Work | Cost |
| --- | --- | --- | --- | --- | --- | --- | --- | --- | --- | --- | --- | --- |
| 2 | 1 | Start | milestone | 0d | 2024-04-17 | 2024-04-17 |  | 0d |  |  |  |  |
| 3 | 2 | **Διοίκηση Έργου** |  | 13d | 2024-04-17 | 2024-05-03 | 2 | 0d |  |  | 584h | 48,720 |
| 4 | 2.1 | Καθορισμός των στόχων και των παραδοτέων του έργου |  | 5d | 2024-04-29 | 2024-05-03 | 5, 6 | 0d |  | Packet Leader [800%] | 320h | 25,600 |
| 5 | 2.2 | Ανάπτυξη του αρχικού χρονοδιαγράμματος και του προϋπολογισμού |  | 5d | 2024-04-22 | 2024-04-26 | 7 | 0d |  | Packet Leader [400%] | 160h | 12,800 |
| 6 | 2.3 | Σύνταξη του Σχεδίου Διαχείρισης Έργου (Project Management Plan) |  | 5d | 2024-04-19 | 2024-04-25 | 8 | 1d |  | Packet Leader | 40h | 3,200 |
| 7 | 2.4 | Προετοιμασία του Σχεδίου Επικοινωνίας (Communication Plan) |  | 3d | 2024-04-17 | 2024-04-19 |  | 0d |  | Packet Leader [200%] | 48h | 3,840 |
| 8 | 2.5 | Συγκρότηση της ομάδας έργου και κατανομή ρόλων και ευθυνών |  | 2d | 2024-04-17 | 2024-04-18 |  | 1d | 0d | Packet Leader; Office [0.1%] | 16h | 3,280 |
| 9 | 3 | **Ανάλυση Συστήματος** |  | 33d | 2024-05-06 | 2024-06-19 | 3 | 0d |  |  | 712h | 53,560 |
| 10 | 3.1 | Συλλογή και Ανάλυση Απαιτήσεων |  | 10d | 2024-05-06 | 2024-05-17 |  | 0d |  | Business Analyst [300%] | 240h | 14,400 |
| 11 | 3.2 | Καταγραφή Λειτουργικών και μη Απαιτήσεων |  | 7d | 2024-05-20 | 2024-05-28 | 10 | 0d |  | Business Analyst [200%] | 112h | 6,720 |
| 12 | 3.3 | Δημιουργία διαγράμματος περιπτώσεων χρήσης βασικής και εναλλακτικής ροης |  | 7d | 2024-05-30 | 2024-06-07 | 11FS+1d | 0d |  | Business Analyst [300%]; Laptop [3 Unit] | 168h | 13,080 |
| 13 | 3.4 | Κατασκευή ενός προσωρινού διαγράμματος κλάσεων |  | 6d | 2024-06-12 | 2024-06-19 | 12FS+2d, 10, 11 | 0d |  | Packet Leader [400%]; Laptop [4 Unit] | 192h | 19,360 |
| 14 | 4 | **Σχεδίαση Συστήματος** |  | 25d | 2024-06-20 | 2024-07-24 | 9 | 0d |  |  | 824h | 68,160 |
| 15 | 4.1 | Δημιουργία διαγράμματος επικαιροποιημένων λεκτικών περιγραφών Π Χ |  | 7d | 2024-06-20 | 2024-06-28 |  | 0d |  | Business Analyst [400%]; Laptop [4 Unit]; Office [0.1%] | 224h | 17,740 |
| 16 | 4.2 | Δημιουργία διαγραμμάτων ακολουθίας |  | 6d | 2024-07-11 | 2024-07-18 | 15FS+3d | 0d |  | Business Analyst [300%]; Laptop [3 Unit] | 144h | 11,640 |
| 17 | 4.3 | Σχεδίαση αναλυτικού διαγράμματος κλάσεων |  | 8.17d | 2024-07-01 | 2024-07-11 | 15 | 4.67d |  | Business Analyst [600%]; Laptop [6 Unit]; Office [0.1%]; Packet Leader | 392h | 30,940 |
| 18 | 4.4 | Δημιουργία διαγράμματος αντικειμένων |  | 2d | 2024-07-23 | 2024-07-24 | 16FS+2d, 17FS+3d | 0d |  | Business Analyst [400%]; Laptop [4 Unit] | 64h | 7,840 |
| 19 | 5 | **Υλοποίηση Συστήματος** |  | 39d | 2024-07-25 | 2024-09-17 | 14 | 0d |  |  | 3380h | 202,120 |
| 20 | 5.1 | Ανάπτυξη του πρωτότυπου συστήματος βάσει των απαιτήσεων και των σχεδίων που προέκυψαν από τη φάση της ανάλυσης και της σχεδίασης |  | 14d | 2024-07-25 | 2024-08-13 |  | 0d |  | Backend Developer [400%]; Frontend Developer [300%]; Data Security Expert [200%]; Packet Leader; Software Architect [300%]; Laptop [15 Unit]; Office [0.1%]; Data Base Analyst [200%] | 1680h | 95,320 |
| 21 | 5.2 | Ενσωμάτωση όλων των λειτουργικών απαιτήσεων που προσδιορίστηκαν στην φάση της ανάλυσης |  | 19d | 2024-08-15 | 2024-09-10 | 20FS+1d | 0d |  | Backend Developer [300%]; Business Analyst [250%]; Laptop [5 Unit]; Data Security Expert | 520h | 30,400 |
| 22 | 5.3 | Ανάπτυξη της διασύνδεσης χρήστη (user interface) |  | 10d | 2024-08-14 | 2024-08-27 | 20 | 10d |  | Frontend Developer [500%]; Business Analyst [300%]; Packet Leader [200%]; Laptop [8 Unit] | 800h | 51,200 |
| 23 | 5.4 | Σύνδεση συστήματος με τις υπάρχουσες βάσεις δεδομένων |  | 5d | 2024-09-11 | 2024-09-17 | 21, 22 | 0d |  | Data Base Analyst [300%]; Backend Developer [250%]; Software Architect [300%]; Packet Leader; Office [0.1%]; Laptop [7 Unit] | 380h | 25,200 |
| 24 | 6 | **Δοκιμή και έλεγχος Συστήματος** |  | 20d | 2024-09-18 | 2024-10-15 | 19 | 0d |  |  | 848h | 65,680 |
| 25 | 6.1 | Ανάπτυξη λεπτομερούς σχεδίου δοκιμών που καλύπτει όλες τις πτυχές του συστήματος |  | 5d | 2024-09-18 | 2024-09-24 |  | 0d |  | Tester [300%]; Business Analyst [200%]; Packet Leader; Laptop [4 Unit] | 240h | 18,000 |
| 26 | 6.2 | Καθορισμός των στόχων και των παραδοτέων των δοκιμών |  | 3d | 2024-09-25 | 2024-09-27 | 25 | 0d |  | Tester [300%]; Packet Leader; Office [0.1%]; Laptop [3 Unit] | 96h | 8,820 |
| 27 | 6.3 | Διεξαγωγή δοκιμών συστήματος για να ελεγχθεί η συνολική λειτουργικότητα και η συμμόρφωση με τις απαιτήσεις |  | 5d | 2024-09-30 | 2024-10-04 | 26 | 0d |  | Tester [400%]; Packet Leader; Laptop [4 Unit]; Office [0.1%] | 200h | 15,500 |
| 28 | 6.4 | Διεξαγωγή δοκιμών απόδοσης για να διασφαλιστεί ότι το σύστημα μπορεί να ανταποκριθεί σε φορτία εργασίας |  | 3d | 2024-10-07 | 2024-10-09 | 27 | 0d |  | Tester [300%]; Data Security Expert [200%]; Data Base Analyst; Laptop [5 Unit]; Packet Leader | 168h | 13,200 |
| 29 | 6.5 | Ανάλυση των αποτελεσμάτων των δοκιμών και βελτιστοποίηση του συστήματος όπου απαιτείται |  | 2d | 2024-10-10 | 2024-10-11 | 27, 28 | 0d |  | Tester [300%]; Packet Leader | 64h | 5,680 |
| 30 | 6.6 | Καταγραφή και παρακολούθηση των σφαλμάτων και των προβλημάτων που εντοπίζονται |  | 2d | 2024-10-14 | 2024-10-15 | 29 | 0d |  | Tester [400%]; Packet Leader | 80h | 4,480 |

| ID | WBS | Task | Type | Duration | Start | Finish | Predecessors | Total slack | Resources | Work | Cost |
| --- | --- | --- | --- | --- | --- | --- | --- | --- | --- | --- | --- |
| 31 | 7 | **Εκπαίδευση Προσωπικού** |  | 17d? | 2024-10-16 | 2024-11-07 | 24 | 0d |  | 648h | 35,280 |
| 32 | 7.1 | Εκπαίδευση |  | 5d | 2024-10-16 | 2024-10-22 |  | 0d | Staff Instructor [300%]; Packet Leader | 144h | 7,020 |
| 33 | 7.2 | Αξιολόγηση των αναγκών εκπαίδευσης του προσωπικού σε σχέση με τις απαιτήσεις του έργου |  | 3d | 2024-10-23 | 2024-10-25 | 32 | 0d | Staff Instructor [300%]; Business Analyst [300%]; Packet Leader; Office [0.1%] | 168h | 9,720 |
| 34 | 7.3 | Καθορισμός των δεξιοτήτων που απαιτούνται |  | 6d | 2024-10-28 | 2024-11-04 | 33 | 0d | Staff Instructor [300%]; Business Analyst [200%] | 120h | 6,060 |
| 35 | 7.4 | Δημιουργία ενός σχεδίου εκπαίδευσης που περιλαμβάνει το περιεχόμενο και το χρονοδιάγραμμα εκπαίδευσης |  | 6d | 2024-10-23 | 2024-10-30 | 32 | 6d | Staff Instructor [300%]; Business Analyst | 96h | 4,620 |
| 36 | 7.5 | Ανάπτυξη εκπαιδευτικού υλικού όπως παρουσιάσεις και διαδραστικά μαθήματα |  | 2d | 2024-11-05 | 2024-11-06 | 34 | 0d | Staff Instructor [200%] | 32h | 1,480 |
| 37 | 7.6 | Αξιολόγηση της αποτελεσματικότητας του εκπαιδευτικού προγράμματος |  | 1d? | 2024-11-07 | 2024-11-07 | 36 | 0d | Staff Instructor [300%]; Packet Leader [800%] | 88h | 6,380 |
| 38 | 6.6 | Finish | milestone | 0d | 2024-11-07 | 2024-11-07 | 31 | 0d |  |  |  |
